Schedule from Planner, 2018-08-01 to 2019-11-01.

## Calendars

- Default: Mon-Fri 08:00-12:00, 13:00-17:00; Sat-Sun off.

## Schedule

| ID | WBS | Task | Type | Duration | Start | Finish | Predecessors | Constraint | Work |
| --- | --- | --- | --- | --- | --- | --- | --- | --- | --- |
| 1 | 1 | **Staffing** |  |  | 2018-08-01 | 2018-09-25 |  |  | 8h |
| 2 | 1.1 | Recruit/hire post-doc and techs |  | 40d | 2018-08-01 | 2018-09-25 |  |  | 8h |
| 3 | 2 | **Procurement** |  |  | 2018-08-01 | 2018-09-25 |  |  | 640h |
| 4 | 2.1 | Rearing chambers |  |  | 2018-08-01 | 2018-09-25 |  |  | 320h |
| 5 | 2.2 | Digital image analysis |  |  | 2018-08-01 | 2018-09-25 |  |  | 320h |
| 6 | 3 | **Coding** |  |  | 2018-08-01 | 2018-09-25 |  |  | 320h |
| 7 | 3.1 | Image analysis methods development |  |  | 2018-08-01 | 2018-09-25 |  |  | 320h |
| 8 | 4 | **CRB collection/rearing** |  |  | 2018-09-26 | 2019-08-27 | 1 |  | 3840h |
| 9 | 4.1 | CRB field collection |  |  | 2018-09-26 | 2019-08-27 | 2 |  | 1920h |
| 10 | 4.2 | Lab rearing |  |  | 2018-09-26 | 2019-08-27 | 9SS |  | 1920h |
| 11 | 5 | **Lab bioassays** |  |  | 2018-11-05 | 2019-11-01 | 9SS+960h |  | 3520h |
| 12 | 5.1 | Test pathogenicity of Duma isolate |  |  | 2018-11-05 | 2018-11-30 |  |  | 160h |
| 13 | 5.2 | Pathogenicity confirmed | milestone | 0d | 2018-11-30 | 2018-11-30 | 12 |  |  |
| 14 | 5.3 | Recycling to increase OrNV pathogenicity |  |  | 2018-12-03 | 2019-11-01 | 13 |  | 1920h |
| 15 | 5.4 | Dosage/response/time bioassays |  |  | 2018-12-03 | 2019-02-22 | 13 |  | 480h |
| 16 | 5.5 | OrNV effect on fecundity |  |  | 2019-02-25 | 2019-05-17 | 15 |  | 480h |
| 17 | 5.6 | OrNV effect on flight |  |  | 2019-05-20 | 2019-08-09 | 16 |  | 480h |
| 18 | 6 | **OrNV production/autodissemination** |  |  | 2018-12-03 | 2019-11-01 | 13 |  | 5760h |
| 19 | 6.1 | In vitro (AgResearch NZ) |  |  | 2018-12-03 | 2019-11-01 |  |  | 1920h |
| 20 | 6.2 | In vivo (UOG) |  |  | 2018-12-03 | 2019-11-01 |  |  | 1920h |
| 21 | 6.3 | Autodissemination of OrNV |  |  | 2018-12-03 | 2019-11-01 | 13 |  | 1920h |
| 22 | 7 | **Monitoring** |  |  | 2018-09-26 | 2019-11-01 | 1 |  | 2464h |
| 23 | 7.1 | OrNV incidence |  |  | 2018-09-26 | 2019-11-01 | 9SS |  | 2304h |
| 24 | 7.2 | Damage assessment (visual) - 2018Q3 |  |  | 2018-10-01 | 2018-10-05 |  | must start on 2018-10-01 | 40h |
| 25 | 7.3 | Damage assessment (visual) - 2019Q1 |  |  | 2019-01-01 | 2019-01-07 |  | must start on 2019-01-01 | 40h |
| 26 | 7.4 | Damage assessment (visual) - 2019Q2 |  |  | 2019-04-01 | 2019-04-05 |  | must start on 2019-04-01 | 40h |
| 27 | 7.5 | Damage assessment (visual) - 2019Q3 |  |  | 2019-07-01 | 2019-07-05 |  | must start on 2019-07-01 | 40h |
